# INST706_Project_Step1

Schedule from MS Project, 2018-05-29 to 2018-12-12, costs in $.
Toshiba

## Calendars

- Standard: Mon-Fri 08:00-12:00, 13:00-17:00; Sat-Sun off. Exceptions (off unless hours are given): 2018-07-04 (Independence Day), 2018-09-03 (Labor Day), 2018-11-22 to 2018-11-23 (Thanksgiving).

## Resources

| Resource | Rate |
| --- | --- |
| Chris Johnson (Project Manager) | 75 |
| Ryan Neff (Functional Lead) | 75 |
| Stacy Lyle (Functional Analyst) | 75 |
| Rick Burke (Infrastructure Lead) | 75 |
| Marc Sanders (Development Lead) | 75 |
| Developer 1 (TBD) | 165 |
| Sanjay Vohra (DBA) | 75 |
| Kara Siposki (Test Lead) | 75 |
| Todd Eliason (Tester) | 75 |
| Developer 2 (TBD) | 175 |
| Developer 3 (TBD) | 175 |
| Trainer 1 | 75 |
| End User 1 | 75 |
| End User 2 | 75 |
| ERP Expert 1 | 175 |
| ERP Expert 2 | 175 |
| Developer 4 | 175 |
| Developer 5 | 175 |

## Schedule

| ID | WBS | Task | Duration | Start | Finish | Predecessors | Total slack | Free slack | Resources | Work | Cost |
| --- | --- | --- | --- | --- | --- | --- | --- | --- | --- | --- | --- |
| 1 | 1 | **Overall Project** | 135d | 2018-05-29 | 2018-12-07 |  |  |  |  | 8744.8h | 868,343.45 |
| 2 | 1.1 | **Project Management** | 137d | 2018-05-29 | 2018-12-11 |  | 0.28d |  |  | 1096h | 82,200 |
| 3 | 1.1.1 | Manage Project | 137d | 2018-05-29 | 2018-12-11 | 69FF | 0.28d |  | Chris Johnson (Project Manager) [90%] | 986.4h | 73,980 |
| 4 | 1.1.2 | Document project progress | 137d | 2018-05-29 | 2018-12-11 | 69FF | 0.28d |  | Chris Johnson (Project Manager) [10%] | 109.6h | 8,220 |
| 5 | 1.2 | **System Requirements** | 13.33d | 2018-05-29 | 2018-06-15 |  |  |  |  | 295.92h | 22,194 |
| 6 | 1.2.1 | Gather Business Requirements | 4d | 2018-05-29 | 2018-06-01 |  | 2.72d | 0d | Ryan Neff (Functional Lead); Stacy Lyle (Functional Analyst) | 64h | 4,800 |
| 7 | 1.2.2 | Design Business Process Flows | 2d | 2018-06-04 | 2018-06-05 | 6 | 2.72d | 0d | Ryan Neff (Functional Lead); Stacy Lyle (Functional Analyst) | 32h | 2,400 |
| 8 | 1.2.3 | Document Business Process Flows | 0.5d | 2018-06-06 | 2018-06-06 | 7 | 132.5d |  | Ryan Neff (Functional Lead); Stacy Lyle (Functional Analyst) | 8h | 600 |
| 9 | 1.2.4 | Finalize Technical Requirements | 6d | 2018-05-29 | 2018-06-05 |  | 19.09d | 5d | Rick Burke (Infrastructure Lead) | 48h | 3,600 |
| 10 | 1.2.5 | Create Operational Requirements | 5d | 2018-06-06 | 2018-06-12 | 6, 7 | 2.72d | 0d | Ryan Neff (Functional Lead); Stacy Lyle (Functional Analyst); Rick Burke (Infrastructure Lead) | 120h | 9,000 |
| 11 | 1.2.6 | Identify Technical Infrastructure Needs | 2d | 2018-06-13 | 2018-06-14 | 9, 10 | 14.09d | 0d | Rick Burke (Infrastructure Lead) | 16h | 1,200 |
| 12 | 1.2.7 | Document Requirements | 0.33d | 2018-06-15 | 2018-06-15 | 6, 9, 10, 11 | 125.67d |  | Rick Burke (Infrastructure Lead); Stacy Lyle (Functional Analyst); Ryan Neff (Functional Lead) | 7.92h | 594 |
| 13 | 1.3 | **Software Requirements** | 19.5d | 2018-06-15 | 2018-07-13 |  |  |  |  | 336h | 25,200 |
| 14 | 1.3.1 | **Create Functional Requirements** | 19.5d | 2018-06-15 | 2018-07-13 | 6, 7, 10 |  |  |  | 216h | 16,200 |
| 15 | 1.3.1.1 | Capture Customer Profile | 4d | 2018-06-15 | 2018-06-20 |  | 5.72d | 2d | Ryan Neff (Functional Lead) | 32h | 2,400 |
| 16 | 1.3.1.2 | View and Search Product Catalog | 6d | 2018-06-15 | 2018-06-22 |  | -1d | 0d | Ryan Neff (Functional Lead) | 48h | 3,600 |
| 17 | 1.3.1.3 | Updating and Calculating Shopping Cart | 3d | 2018-06-25 | 2018-06-27 | 16 | -1d | 0d | Ryan Neff (Functional Lead) | 24h | 1,800 |
| 18 | 1.3.1.4 | Taking Payments | 6d | 2018-06-15 | 2018-06-22 |  | 3.72d | 3d | Stacy Lyle (Functional Analyst) | 48h | 3,600 |
| 19 | 1.3.1.5 | Submit Order | 8d | 2018-06-28 | 2018-07-10 | 15, 16, 17, 18 | -1d | 0d | Ryan Neff (Functional Lead) [50%] | 32h | 2,400 |
| 20 | 1.3.1.6 | Check Order History & Order Status | 3d | 2018-07-11 | 2018-07-13 | 19 | -1d | 0d | Ryan Neff (Functional Lead) | 24h | 1,800 |
| 21 | 1.3.1.7 | Document Functional requirements | 0.5d | 2018-07-16 | 2018-07-16 | 15, 16, 17, 18, 19, 20 | -1d | 0d | Ryan Neff (Functional Lead); Stacy Lyle (Functional Analyst) | 8h | 600 |
| 22 | 1.3.2 | Create Data Requirements | 3d | 2018-06-25 | 2018-06-27 | 15, 16 | 11.22d | 7d | Stacy Lyle (Functional Analyst) | 24h | 1,800 |
| 23 | 1.3.3 | Create ERP Interface Requirements | 7d | 2018-06-28 | 2018-07-09 | 19SS | 2.5d | 0d | Stacy Lyle (Functional Analyst) | 56h | 4,200 |
| 24 | 1.3.4 | Create User Interface Requirements | 4d | 2018-06-25 | 2018-06-28 | 14SS | 10.22d | 6d | Stacy Lyle (Functional Analyst) | 32h | 2,400 |
| 25 | 1.3.5 | Document Data, ERP Interface and User Interface Requiremnts | 1d | 2018-07-10 | 2018-07-10 | 22, 23, 24 | 2.5d |  | Stacy Lyle (Functional Analyst) | 8h | 600 |

| ID | WBS | Task | Duration | Start | Finish | Predecessors | Total slack | Free slack | Resources | Work | Cost |
| --- | --- | --- | --- | --- | --- | --- | --- | --- | --- | --- | --- |
| 26 | 1.4 | **Detailed Design** | 27.2d | 2018-07-13 | 2018-08-21 | 13 | 0d |  |  | 784h | 74,784 |
| 27 | 1.4.1 | Design Capture Customer Profile Pages & Components | 9d | 2018-07-13 | 2018-07-26 |  | 3.72d | 0d | Marc Sanders (Development Lead); Ryan Neff (Functional Lead) [50%] | 108h | 8,100 |
| 28 | 1.4.2 | Design View and Search Product Catalog Pages & Components | 9d | 2018-07-13 | 2018-07-26 |  | 0d |  | Developer 1 (TBD); Ryan Neff (Functional Lead) [50%] | 108h | 14,580 |
| 29 | 1.4.3 | Design Updating and Calculating Shopping Cart | 3d | 2018-07-26 | 2018-07-31 | 28 | 0d |  | Developer 1 (TBD); Ryan Neff (Functional Lead) | 48h | 5,760 |
| 30 | 1.4.4 | Design Taking Payments Pages & Components | 6d | 2018-07-13 | 2018-07-31 |  | 0d |  | Marc Sanders (Development Lead); Stacy Lyle (Functional Analyst) | 48h | 3,600 |
| 31 | 1.4.5 | Design Submit Order Pages & Components | 8d | 2018-07-31 | 2018-08-10 | 27, 28, 29, 30 | 5.72d | 0d | Marc Sanders (Development Lead); Ryan Neff (Functional Lead) | 128h | 9,600 |
| 32 | 1.4.6 | Design check Order History & Order Status Pages & Components | 2d | 2018-08-10 | 2018-08-14 | 31 | 5.72d | 0d | Marc Sanders (Development Lead); Ryan Neff (Functional Lead) | 32h | 2,400 |
| 33 | 1.4.7 | Design Logical & Physical Data Model | 12d | 2018-07-13 | 2018-07-31 |  | 4.59d | 0d | Sanjay Vohra (DBA); Stacy Lyle (Functional Analyst) | 144h | 10,800 |
| 34 | 1.4.8 | Design ERP Interface | 15d | 2018-07-31 | 2018-08-21 | 27, 28, 29, 30 | 0d |  | Developer 1 (TBD) [66.7%]; Stacy Lyle (Functional Analyst) [66.7%] | 160h | 19,200 |
| 35 | 1.4.9 | Document the design of all modules | 0.2d | 2018-08-21 | 2018-08-21 | 27, 28, 29, 30, 31, 32, 33, 34 | 0d |  | Ryan Neff (Functional Lead); Stacy Lyle (Functional Analyst); Developer 1 (TBD); Marc Sanders (Development Lead); Sanjay Vohra (DBA) | 8h | 744 |
| 36 | 1.5 | **Test Planning** | 51.87d | 2018-07-13 | 2018-09-26 |  | 0d |  |  | 448h | 33,600 |
| 37 | 1.5.1 | Gather Testing Requirements | 7d | 2018-07-13 | 2018-07-24 | 14 | 20.92d | 20.2d | Kara Siposki (Test Lead); Todd Eliason (Tester) | 112h | 8,400 |
| 38 | 1.5.2 | Create System Test Plan & Test Cases | 10d | 2018-08-21 | 2018-09-05 | 37, 26 | 0d |  | Kara Siposki (Test Lead); Todd Eliason (Tester) | 160h | 12,000 |
| 39 | 1.5.3 | Write System Test Scripts | 14.67d | 2018-09-05 | 2018-09-26 | 38 | 0d |  | Kara Siposki (Test Lead); Todd Eliason (Tester) | 176h | 13,200 |
| 40 | 1.6 | **Technical Infrastructure** | 109d | 2018-06-15 | 2018-11-16 |  | 12.37d |  |  | 876.8h | 65,760 |
| 41 | 1.6.1 | Create Development Environment | 20d | 2018-06-15 | 2018-07-13 | 11 | 12.37d | 0d | Rick Burke (Infrastructure Lead) | 160h | 12,000 |
| 42 | 1.6.2 | Create Testing Environment | 38d | 2018-07-16 | 2018-09-06 | 41 | 19.78d | 0d | Rick Burke (Infrastructure Lead) [90%] | 273.6h | 20,520 |
| 43 | 1.6.3 | Support Development Environment | 38d | 2018-07-16 | 2018-09-06 | 41 | 65.78d | 50.5d | Rick Burke (Infrastructure Lead) [10%] | 30.4h | 2,280 |
| 44 | 1.6.4 | Support Testing Environment & Deployment | 46d | 2018-09-07 | 2018-11-09 | 42 | 19.78d | 4.5d | Rick Burke (Infrastructure Lead) | 368h | 27,600 |
| 45 | 1.6.5 | Support Database | 46d | 2018-09-13 | 2018-11-16 | 55 | 15.28d | 0d | Sanjay Vohra (DBA) [10%] | 36.8h | 2,760 |
| 46 | 1.6.6 | Document Technical infrastructure details | 0.5d | 2018-11-16 | 2018-11-16 | 41, 42, 43, 44, 45 | 15.28d |  | Rick Burke (Infrastructure Lead); Sanjay Vohra (DBA) | 8h | 600 |
| 47 | 1.7 | **Development & Unit Test** | 45.16d | 2018-07-26 | 2018-09-28 | 41 | 3.87d |  |  | 1292.24h | 167,110.8 |
| 48 | 1.7.1 | Train developers | 3d | 2018-07-26 | 2018-07-31 | 27 | 4.59d | 0d | Trainer 1; Developer 1 (TBD); Developer 2 (TBD); Developer 3 (TBD) | 96h | 14,160 |
| 49 | 1.7.2 | Build Capture Customer Profile Pages & Components | 13d | 2018-07-31 | 2018-08-27 | 27, 48 | 4.59d | 0d | Developer 2 (TBD) | 104h | 18,200 |
| 50 | 1.7.3 | Build View and Search Product Catalog Pages & Components | 12d | 2018-07-31 | 2018-08-16 | 28, 48 | 4.59d | 0d | Developer 3 (TBD) | 96h | 16,800 |
| 51 | 1.7.4 | Build Updating and Calculating Shopping Cart | 7d | 2018-08-16 | 2018-08-27 | 29, 50, 48 | 3.87d | 0d | Developer 3 (TBD) | 56h | 9,800 |
| 52 | 1.7.5 | Build Taking Payments Pages & Components | 6d | 2018-07-31 | 2018-08-08 | 30, 48 | 16.87d | 13d | Developer 2 (TBD) | 48h | 8,400 |
| 53 | 1.7.6 | Build Submit Order Pages & Components | 12d | 2018-08-27 | 2018-09-13 | 31, 49, 50, 51, 52, 48 | 3.87d | 2d | Developer 2 (TBD); Developer 3 (TBD) | 192h | 33,600 |
| 54 | 1.7.7 | Build Check Order History & Order Status Pages & Components | 6d | 2018-08-14 | 2018-08-22 | 32, 48 | 18.87d | 17d | Marc Sanders (Development Lead) | 48h | 3,600 |
| 55 | 1.7.8 | Build Logical & Physical Data Model | 31d | 2018-07-31 | 2018-09-13 | 33, 48 | 3.87d | 0d | Sanjay Vohra (DBA) [50%] | 124h | 9,300 |
| 56 | 1.7.9 | Build ERP Interface | 18d | 2018-08-21 | 2018-09-17 | 34, 48 | 1.87d | 0d | Developer 1 (TBD) | 144h | 23,760 |
| 57 | 1.7.10 | Support Development & Assembly Test | 26.67d | 2018-08-21 | 2018-09-28 | 26, 48 | 50.62d | 0d | Ryan Neff (Functional Lead); Stacy Lyle (Functional Analyst) | 368h | 27,600 |
| 58 | 1.7.11 | Document development work and best practices | 0.29d | 2018-09-28 | 2018-09-28 | 49, 50, 51, 52, 53, 54, 55, 56, 57 | 50.62d |  | Developer 1 (TBD); Developer 2 (TBD); Developer 3 (TBD); Stacy Lyle (Functional Analyst); Sanjay Vohra (DBA); Marc Sanders (Development Lead); Ryan Neff (Functional Lead) | 16.24h | 1,890.8 |

| ID | WBS | Task | Duration | Start | Finish | Predecessors | Total slack | Free slack | Resources | Work | Cost |
| --- | --- | --- | --- | --- | --- | --- | --- | --- | --- | --- | --- |
| 59 | 1.8 | **Testing** | 51.2d | 2018-08-27 | 2018-11-07 |  | 0d |  |  | 2191.84h | 246,353.6 |
| 60 | 1.8.1 | **Perform Assembly Testing** | 19d | 2018-08-27 | 2018-09-24 | 37 | 1.87d |  |  | 256h | 30,800 |
| 61 | 1.8.1.1 | Perform Phase 1 Testing | 12d | 2018-08-27 | 2018-09-13 | 49, 50, 51 | 3.87d | 2d | Marc Sanders (Development Lead) | 96h | 7,200 |
| 62 | 1.8.1.2 | Perform Phase 2 Testing | 5d | 2018-09-17 | 2018-09-24 | 52, 53, 54, 61, 55, 56 | 1.87d |  | Marc Sanders (Development Lead); Developer 1 (TBD); Developer 2 (TBD); Developer 3 (TBD) | 160h | 23,600 |
| 63 | 1.8.2 | Perform System Testing | 20d | 2018-09-26 | 2018-10-24 | 60, 38, 39 | 0d |  | Developer 1 (TBD); Developer 2 (TBD); Developer 3 (TBD); Kara Siposki (Test Lead); Marc Sanders (Development Lead); Ryan Neff (Functional Lead); Stacy Lyle (Functional Analyst); Todd Eliason (Tester) | 1280h | 142,400 |
| 64 | 1.8.3 | Perform Validation Testing | 10d | 2018-10-24 | 2018-11-07 | 63 | 0d |  | Kara Siposki (Test Lead); Todd Eliason (Tester); Marc Sanders (Development Lead); Developer 1 (TBD); Developer 2 (TBD); Developer 3 (TBD); Ryan Neff (Functional Lead); Stacy Lyle (Functional Analyst) | 640h | 71,200 |
| 65 | 1.8.4 | Document tests and test results | 0.33d | 2018-11-07 | 2018-11-07 | 60, 63, 64 | 0d |  | Developer 1 (TBD); Developer 2 (TBD); Developer 3 (TBD); Kara Siposki (Test Lead); Stacy Lyle (Functional Analyst); Todd Eliason (Tester) | 15.84h | 1,953.6 |
| 66 | 1.9 | **Deployment** | 22.58d | 2018-11-07 | 2018-12-12 | 59 | 0d |  |  | 1424h | 151,141.05 |
| 67 | 1.9.1 | Implement System | 10d | 2018-11-07 | 2018-11-21 |  | 0d |  | Kara Siposki (Test Lead); Todd Eliason (Tester); Marc Sanders (Development Lead); Developer 1 (TBD); Developer 2 (TBD); Developer 3 (TBD); Ryan Neff (Functional Lead); Stacy Lyle (Functional Analyst) | 640h | 71,200 |
| 68 | 1.9.2 | Deploy To Production | 1d | 2018-11-21 | 2018-11-26 | 67 | 0d |  | Kara Siposki (Test Lead); Todd Eliason (Tester); Marc Sanders (Development Lead); Developer 1 (TBD); Developer 2 (TBD); Developer 3 (TBD); Ryan Neff (Functional Lead); Stacy Lyle (Functional Analyst) | 64h | 7,120 |
| 69 | 1.9.3 | Project Wrap up | 11.58d | 2018-11-26 | 2018-12-12 | 68 | 0d |  | Developer 1 (TBD); Developer 2 (TBD); Developer 3 (TBD); Kara Siposki (Test Lead); Marc Sanders (Development Lead); Ryan Neff (Functional Lead); Stacy Lyle (Functional Analyst); Todd Eliason (Tester); Rick Burke (Infrastructure Lead) | 720h | 72,821.05 |
